# Plan

Schedule from MS Project, 2015-02-23 to 2016-01-26, 2 hours a day, A marks actual dates.

## Calendars

- Calendario: Mon-Fri 16:00-18:00; Sat-Sun off.

## Resources

| Resource |
| --- |
| OJG |
| EARG |
| YLS |
| AMG |
| SVM |
| SYMONA |
| TODOSS |
| TOO |

## Schedule

| ID | WBS | Task | Duration | Start | Finish | Predecessors | Complete | Remaining | Total slack | Free slack | Resources | Work | Actual work |
| --- | --- | --- | --- | --- | --- | --- | --- | --- | --- | --- | --- | --- | --- |
| 1 | 1 | **Proyecto** | 242d | 2015-02-23 16:00 A | 2016-01-26 18:00 |  | 6% | 228.23d | 0d |  |  | 1670h | 110h |
| 2 | 1.1 | **Etapa 1: Requerimientos** | 1.5d | 2015-02-23 16:00 A | 2015-02-24 17:00 A |  | 100% |  |  |  | OJG; EARG; YLS; AMG; SVM | 20h | 20h |
| 3 | 1.1.1 | Revisión de documento de requerimientos | 2h | 2015-02-23 16:00 A | 2015-02-23 18:00 A |  | 100% |  |  |  |  |  |  |
| 4 | 1.1.2 | Revisión de documento de requerimientos según el plan de calidad | 1h | 2015-02-24 16:00 A | 2015-02-24 17:00 A | 3 | 100% |  |  |  | EARG; OJG; AMG; SVM; YLS | 5h | 5h |
| 5 | 1.2 | **Etapa 2: Base de datos** | 29.5d | 2015-02-24 17:00 A | 2015-04-06 18:00 |  | 49% | 15d | 0d |  | OJG; EARG | 138h | 58h |
| 6 | 1.2.1 | Asesoramiento de bases de datos | 2h | 2015-02-24 17:00 A | 2015-02-25 17:00 A | 2 | 100% |  |  |  |  |  |  |
| 7 | 1.2.2 | Creación del modelo entidad-relación de la base de datos | 27h | 2015-02-25 17:00 A | 2015-03-16 18:00 A | 6 | 100% |  |  |  |  |  |  |
| 8 | 1.2.3 | Revisión del diagrama entidad-relación según el plan de calidad. | 2h | 2015-03-17 16:00 | 2015-03-17 18:00 | 7 |  |  | 0d |  | EARG; OJG; AMG; SVM; YLS | 10h |  |
| 9 | 1.2.4 | Conversión de modelo entidad-relación a modelo relacional. | 13h | 2015-03-18 16:00 | 2015-03-26 17:00 | 8 |  |  | 0d |  |  |  |  |
| 10 | 1.2.5 | Revisión del Modelo relacional según el plan de calidad. | 2h | 2015-03-26 17:00 | 2015-03-27 17:00 | 9 |  |  | 0d |  | YLS; EARG; OJG; AMG; SVM | 10h |  |
| 11 | 1.2.6 | Construcción en SQL de la base de datos | 13h | 2015-03-27 17:00 | 2015-04-06 18:00 | 10 |  |  | 0d |  |  |  |  |
| 12 | 1.3 | **Etapa 3: Diseño del ciclo 1** | 30.5d | 2015-02-24 17:00 A | 2015-04-07 18:00 |  | 32% | 20.66d | 0d |  |  | 101h | 32h |
| 13 | 1.3.1 | Hacer diagrama de actividad del módulo de clasificación. | 9h | 2015-02-24 17:00 A | 2015-03-02 18:00 A | 2 | 100% |  |  |  | AMG; SVM; YLS | 27h | 27h |
| 14 | 1.3.2 | Revisión del diagrama de actividades según el plan de calidad. | 1h | 2015-03-03 16:00 A | 2015-03-03 17:00 A | 13 | 100% |  |  |  | YLS; EARG; OJG; AMG; SVM | 5h | 5h |
| 15 | 1.3.3 | Creación del prototipo del módulo de clasificación. | 8h | 2015-03-03 17:00 | 2015-03-09 17:00 | 14 |  |  | 15d | 0d | AMG; SVM; YLS | 24h |  |
| 16 | 1.3.4 | Revisión de prototipo de Mockups según el plan de calidad. | 1h | 2015-03-09 17:00 | 2015-03-09 18:00 | 15 |  |  | 15d | 0d | YLS; EARG; OJG; AMG; SVM | 5h |  |
| 17 | 1.3.5 | Hacer plan de pruebas de sistema. | 10h | 2015-03-10 16:00 | 2015-03-16 18:00 | 16 |  |  | 15d |  | AMG; SVM; YLS | 30h |  |
| 18 | 1.3.6 | Revisar entre todo el equipo el plan de pruebas creado. | 1h | 2015-04-07 16:00 | 2015-04-07 17:00 | 17, 5 |  |  | 0d |  | OJG; AMG; SVM; EARG; YLS | 5h |  |
| 19 | 1.3.7 | Revisión de diseño con la base de datos | 1h | 2015-04-07 17:00 | 2015-04-07 18:00 | 18 |  |  | 0d |  | OJG; EARG; YLS; AMG; SVM | 5h |  |
| 20 | 1.4 | **Etapa 4: Construcción del ciclo 1 - módulo clasificación** | 6.5d | 2015-04-08 16:00 | 2015-04-16 17:00 |  |  |  | 0d |  |  | 52h |  |
| 21 | 1.4.1 | Registrar artículo | 13h | 2015-04-08 16:00 | 2015-04-16 17:00 | 12 |  |  | 0d |  | OJG | 13h |  |
| 22 | 1.4.2 | Eliminar artículo | 13h | 2015-04-08 16:00 | 2015-04-16 17:00 | 12 |  |  | 0d |  | EARG | 13h |  |
| 23 | 1.4.3 | Actualizar artículo | 13h | 2015-04-08 16:00 | 2015-04-16 17:00 | 12 |  |  | 0d |  | AMG | 13h |  |
| 24 | 1.4.4 | Buscar artículo | 13h | 2015-04-08 16:00 | 2015-04-16 17:00 | 12 |  |  | 0d |  | SVM | 13h |  |

| ID | WBS | Task | Duration | Start | Finish | Predecessors | Total slack | Free slack | Resources | Work |
| --- | --- | --- | --- | --- | --- | --- | --- | --- | --- | --- |
| 25 | 1.5 | **Etapa 5: Ejecución de pruebas** | 6.5d | 2015-04-16 17:00 | 2015-04-24 18:00 |  | 0d |  |  | 65h |
| 26 | 1.5.1 | Realizar pruebas de sistema del módulo de clasificación | 5h | 2015-04-16 17:00 | 2015-04-20 18:00 | 20 | 0d |  | OJG; EARG; YLS; AMG; SVM | 25h |
| 27 | 1.5.2 | Corrección de errores | 8h | 2015-04-21 16:00 | 2015-04-24 18:00 | 26 | 0d |  | OJG; EARG; YLS; AMG; SVM | 40h |
| 28 | 1.6 | **Etapa 6: Junta con el cliente** | 1d | 2015-04-27 16:00 | 2015-04-27 18:00 |  | 0d |  |  | 10h |
| 29 | 1.6.1 | Junta con el cliente(aprobación del primer incremento) | 2h | 2015-04-27 16:00 | 2015-04-27 18:00 | 25 | 0d |  | OJG; EARG; YLS; AMG; SVM | 10h |
| 30 | 1.7 | **Etapa 7: Diseño del ciclo 2** | 22.5d | 2015-04-28 16:00 | 2015-05-28 17:00 |  | 0d |  |  | 112h |
| 31 | 1.7.1 | Hacer diagrama de actividad del módulo de vales de entrada. | 9h | 2015-04-28 16:00 | 2015-05-04 17:00 | 28 | 0d |  | YLS | 9h |
| 32 | 1.7.2 | Revisión del diagrama de actividades según el plan de calidad. | 1h | 2015-05-04 17:00 | 2015-05-04 18:00 | 31 | 0d |  | YLS; EARG; OJG; AMG; SVM | 5h |
| 33 | 1.7.3 | Creación del prototipo del módulo vales de entrada. | 8h | 2015-05-05 16:00 | 2015-05-08 18:00 | 32 | 0d |  | YLS | 8h |
| 34 | 1.7.4 | Revisión de prototipo de Mockups según el plan de calidad. | 1h | 2015-05-11 16:00 | 2015-05-11 17:00 | 33 | 0d |  | YLS; EARG; OJG; AMG; SVM | 5h |
| 35 | 1.7.5 | Hacer diagrama de actividad del módulo de vales de salida/préstamo. | 9h | 2015-04-28 16:00 | 2015-05-04 17:00 | 28 | 0.5d | 0d | SVM | 9h |
| 36 | 1.7.6 | Revisión del diagrama de actividades según el plan de calidad. | 1h | 2015-05-04 17:00 | 2015-05-04 18:00 | 35 | 0.5d | 0d | YLS; EARG; OJG; AMG; SVM | 5h |
| 37 | 1.7.7 | Creación del prototipo del módulo vales de salida/préstamo. | 8h | 2015-05-05 16:00 | 2015-05-08 18:00 | 36 | 0.5d | 0d | SVM | 8h |
| 38 | 1.7.8 | Revisión de prototipo de Mockups según el plan de calidad. | 1h | 2015-05-11 16:00 | 2015-05-11 17:00 | 37 | 13d |  | YLS; EARG; OJG; AMG; SVM | 5h |
| 39 | 1.7.9 | Hacer plan de pruebas de integración. | 14h | 2015-05-11 17:00 | 2015-05-20 17:00 | 34, 37 | 0d |  | AMG; YLS | 28h |
| 40 | 1.7.10 | Hacer plan de pruebas de sistema. | 10h | 2015-05-20 17:00 | 2015-05-27 17:00 | 39 | 0d |  | AMG; YLS | 20h |
| 41 | 1.7.11 | Revisar entre todo el equipo el plan de pruebas creado. | 1h | 2015-05-27 17:00 | 2015-05-27 18:00 | 40 | 0d |  | OJG; AMG; SVM; EARG; YLS | 5h |
| 42 | 1.7.12 | Revisión de diseño con la base de datos | 1h | 2015-05-28 16:00 | 2015-05-28 17:00 | 41 | 0d |  | OJG; EARG; YLS; AMG; SVM | 5h |
| 43 | 1.8 | **Etapa 8: Construcción del ciclo 2 - modulo de vales** | 6.5d | 2015-05-28 17:00 | 2015-06-05 18:00 |  | 0d |  |  | 26h |
| 44 | 1.8.1 | Módulo Vales de entrada | 13h | 2015-05-28 17:00 | 2015-06-05 18:00 | 30 | 0d |  | OJG | 13h |
| 45 | 1.8.2 | Módulo Vales de salida/préstamo | 13h | 2015-05-28 17:00 | 2015-06-05 18:00 | 30 | 0d |  | EARG | 13h |
| 46 | 1.9 | **Etapa 9: Ejecución de pruebas** | 11d | 2015-06-08 16:00 | 2015-06-22 18:00 |  | 0d |  |  | 44h |
| 47 | 1.9.1 | Ejecución de pruebas de integración | 9h | 2015-06-08 16:00 | 2015-06-12 17:00 | 43 | 0d |  | AMG; YLS | 18h |
| 48 | 1.9.2 | Ejecución de pruebas de sistema | 5h | 2015-06-12 17:00 | 2015-06-16 18:00 | 47 | 0d |  | AMG; YLS | 10h |
| 49 | 1.9.3 | Corrección de errores | 8h | 2015-06-17 16:00 | 2015-06-22 18:00 | 48 | 0d |  | EARG; OJG | 16h |

| ID | WBS | Task | Duration | Start | Finish | Predecessors | Total slack | Resources | Work |
| --- | --- | --- | --- | --- | --- | --- | --- | --- | --- |
| 50 | 1.10 | **Etapa 10: Diseño del ciclo 3** | 22.5d | 2015-06-23 16:00 | 2015-07-23 17:00 |  | 0d |  | 119h |
| 51 | 1.10.1 | Hacer diagrama de actividad del módulo de proveedores. | 9h | 2015-06-23 16:00 | 2015-06-29 17:00 | 46 | 0d | YLS; AMG; SVM | 27h |
| 52 | 1.10.2 | Revisión del diagrama de actividades según el plan de calidad. | 1h | 2015-06-29 17:00 | 2015-06-29 18:00 | 51 | 0d | YLS; EARG; OJG; AMG; SVM | 5h |
| 53 | 1.10.3 | Creación del prototipo del módulo de proveedores. | 8h | 2015-06-30 16:00 | 2015-07-03 18:00 | 52 | 0d | YLS; AMG; SVM | 24h |
| 54 | 1.10.4 | Revisión de prototipo de Mockups según el plan de calidad. | 1h | 2015-07-06 16:00 | 2015-07-06 17:00 | 53 | 0d | YLS; EARG; OJG; AMG; SVM | 5h |
| 55 | 1.10.5 | Hacer plan de pruebas de integración. | 14h | 2015-07-06 17:00 | 2015-07-15 17:00 | 54 | 0d | YLS; AMG | 28h |
| 56 | 1.10.6 | Hacer plan de pruebas de sistema. | 10h | 2015-07-15 17:00 | 2015-07-22 17:00 | 55 | 0d | YLS; AMG | 20h |
| 57 | 1.10.7 | Revisar entre todo el equipo el plan de pruebas creado. | 1h | 2015-07-22 17:00 | 2015-07-22 18:00 | 56 | 0d | OJG; EARG; YLS; AMG; SVM | 5h |
| 58 | 1.10.8 | Revisión de diseño con la base de datos | 1h | 2015-07-23 16:00 | 2015-07-23 17:00 | 57 | 0d | OJG; EARG; YLS; AMG; SVM | 5h |
| 59 | 1.11 | **Etapa 11: Construcción del ciclo 3: módulo de proovedores** | 6.5d | 2015-07-23 17:00 | 2015-07-31 18:00 |  | 0d |  | 52h |
| 60 | 1.11.1 | Registrar proveedor | 13h | 2015-07-23 17:00 | 2015-07-31 18:00 | 50 | 0d | OJG | 13h |
| 61 | 1.11.2 | Eliminar proveedor | 13h | 2015-07-23 17:00 | 2015-07-31 18:00 | 50 | 0d | EARG | 13h |
| 62 | 1.11.3 | Actualizar proveedor | 13h | 2015-07-23 17:00 | 2015-07-31 18:00 | 50 | 0d | AMG | 13h |
| 63 | 1.11.4 | Buscar proveedor | 13h | 2015-07-23 17:00 | 2015-07-31 18:00 | 50 | 0d | SVM | 13h |
| 64 | 1.12 | **Etapa 12: Ejecución de pruebas** | 11d | 2015-08-03 16:00 | 2015-08-17 18:00 |  | 0d |  | 86h |
| 65 | 1.12.1 | Ejecución de pruebas de integración | 9h | 2015-08-03 16:00 | 2015-08-07 17:00 | 59 | 0d | OJG; EARG; YLS; AMG; SVM | 45h |
| 66 | 1.12.2 | Ejecución de pruebas de sistema | 5h | 2015-08-07 17:00 | 2015-08-11 18:00 | 65 | 0d | OJG; EARG; YLS; AMG; SVM | 25h |
| 67 | 1.12.3 | Corrección de errores | 8h | 2015-08-12 16:00 | 2015-08-17 18:00 | 66 | 0d | OJG; EARG | 16h |
| 68 | 1.13 | **Etapa 13: Diseño del ciclo 4** | 22.5d | 2015-08-18 16:00 | 2015-09-17 17:00 |  | 0d |  | 119h |
| 69 | 1.13.1 | Hacer diagrama de actividad del módulo de reportes. | 9h | 2015-08-18 16:00 | 2015-08-24 17:00 | 64 | 0d | AMG; YLS; SVM | 27h |
| 70 | 1.13.2 | Revisión del diagrama de actividades según el plan de calidad. | 1h | 2015-08-24 17:00 | 2015-08-24 18:00 | 69 | 0d | YLS; EARG; OJG; AMG; SVM | 5h |
| 71 | 1.13.3 | Creación del prototipo del módulo de reportes. | 8h | 2015-08-25 16:00 | 2015-08-28 18:00 | 70 | 0d | AMG; YLS; SVM | 24h |
| 72 | 1.13.4 | Revisión de prototipo de Mockups según el plan de calidad. | 1h | 2015-08-31 16:00 | 2015-08-31 17:00 | 71 | 0d | YLS; EARG; OJG; AMG; SVM | 5h |
| 73 | 1.13.5 | Hacer plan de pruebas de integración. | 14h | 2015-08-31 17:00 | 2015-09-09 17:00 | 72 | 0d | YLS; AMG | 28h |
| 74 | 1.13.6 | Hacer plan de pruebas de sistema. | 10h | 2015-09-09 17:00 | 2015-09-16 17:00 | 73 | 0d | YLS; AMG | 20h |
| 75 | 1.13.7 | Revisar entre todo el equipo el plan de pruebas creado. | 1h | 2015-09-16 17:00 | 2015-09-16 18:00 | 74 | 0d | OJG; AMG; SVM; EARG; YLS | 5h |
| 76 | 1.13.8 | Revisión de diseño con la base de datos | 1h | 2015-09-17 16:00 | 2015-09-17 17:00 | 75 | 0d | OJG; AMG; SVM; EARG; YLS | 5h |

| ID | WBS | Task | Duration | Start | Finish | Predecessors | Total slack | Resources | Work |
| --- | --- | --- | --- | --- | --- | --- | --- | --- | --- |
| 77 | 1.14 | **Etapa 14: Construcción del ciclo 4: modulo de reportes** | 13.5d | 2015-09-17 17:00 | 2015-10-06 18:00 |  | 0d |  | 108h |
| 78 | 1.14.1 | Generar reportes de artículos | 27h | 2015-09-17 17:00 | 2015-10-06 18:00 | 68 | 0d | OJG | 27h |
| 79 | 1.14.2 | Generar reportes de proveedores | 27h | 2015-09-17 17:00 | 2015-10-06 18:00 | 68 | 0d | EARG | 27h |
| 80 | 1.14.3 | Generar reportes de vales de entrada | 27h | 2015-09-17 17:00 | 2015-10-06 18:00 | 68 | 0d | AMG | 27h |
| 81 | 1.14.4 | Generar reportes de vales de salida/préstamo | 27h | 2015-09-17 17:00 | 2015-10-06 18:00 | 68 | 0d | SVM | 27h |
| 82 | 1.15 | **Etapa 15: Ejecución de pruebas** | 15d | 2015-10-07 16:00 | 2015-10-27 18:00 |  | 0d |  | 150h |
| 83 | 1.15.1 | Ejecución de pruebas de integración | 9h | 2015-10-07 16:00 | 2015-10-13 17:00 | 77 | 0d | OJG; EARG; YLS; AMG; SVM | 45h |
| 84 | 1.15.2 | Ejecución de pruebas de sistema | 5h | 2015-10-13 17:00 | 2015-10-15 18:00 | 83 | 0d | OJG; EARG; YLS; AMG; SVM | 25h |
| 85 | 1.15.3 | Corrección de errores | 16h | 2015-10-16 16:00 | 2015-10-27 18:00 | 84 | 0d | OJG; EARG; YLS; AMG; SVM | 80h |
| 86 | 1.16 | **Etapa 16: Diseño del ciclo 5** | 23d | 2015-10-28 16:00 | 2015-11-27 18:00 |  | 0d |  | 122h |
| 87 | 1.16.1 | Hacer diagrama de actividad del módulo de usuarios. | 9h | 2015-10-28 16:00 | 2015-11-03 17:00 | 82 | 0d | AMG; SVM; YLS | 27h |
| 88 | 1.16.2 | Revisión del diagrama de actividades según el plan de calidad. | 1h | 2015-11-03 17:00 | 2015-11-03 18:00 | 87 | 0d | YLS; EARG; OJG; AMG; SVM | 5h |
| 89 | 1.16.3 | Hacer diagrama de casos de uso del módulo de usuarios | 9h | 2015-11-04 16:00 | 2015-11-10 17:00 | 88 | 0d | AMG; SVM; YLS | 27h |
| 90 | 1.16.4 | Revisión del diagrama de casos de uso del módulo de usuarios según el plan de calidad. | 1h | 2015-11-10 17:00 | 2015-11-10 18:00 | 89 | 0d | YLS; EARG; OJG; AMG; SVM | 5h |
| 91 | 1.16.5 | Hacer plan de pruebas de integración. | 14h | 2015-11-11 16:00 | 2015-11-19 18:00 | 90 | 0d | AMG; YLS | 28h |
| 92 | 1.16.6 | Hacer plan de pruebas de sistema. | 10h | 2015-11-20 16:00 | 2015-11-26 18:00 | 91 | 0d | AMG; YLS | 20h |
| 93 | 1.16.7 | Revisar entre todo el equipo el plan de pruebas creado. | 1h | 2015-11-27 16:00 | 2015-11-27 17:00 | 92 | 0d | OJG; EARG; YLS; AMG; SVM | 5h |
| 94 | 1.16.8 | Revisión de diseño con la base de datos | 1h | 2015-11-27 17:00 | 2015-11-27 18:00 | 93 | 0d | OJG; EARG; YLS; AMG; SVM | 5h |
| 95 | 1.17 | **Etapa 17: Construcción del ciclo 5: modulo de usuarios** | 3d | 2015-11-30 16:00 | 2015-12-02 18:00 |  | 0d |  | 18h |
| 96 | 1.17.1 | Permitir acceso a técnico. | 6h | 2015-11-30 16:00 | 2015-12-02 18:00 | 86 | 0d | OJG | 6h |
| 97 | 1.17.2 | Permitir acceso a director. | 6h | 2015-11-30 16:00 | 2015-12-02 18:00 | 86 | 0d | EARG | 6h |
| 98 | 1.17.3 | Permitir acceso a jefe de laboratorio. | 6h | 2015-11-30 16:00 | 2015-12-02 18:00 | 86 | 0d | SVM | 6h |
| 99 | 1.18 | **Etapa 18: Ejecución de pruebas** | 4d | 2015-12-03 16:00 | 2015-12-08 18:00 |  | 0d |  | 16h |
| 100 | 1.18.1 | Ejecución de pruebas de sistema | 5h | 2015-12-03 16:00 | 2015-12-07 17:00 | 95 | 0d | AMG; YLS | 10h |
| 101 | 1.18.2 | Corrección de errores | 3h | 2015-12-07 17:00 | 2015-12-08 18:00 | 100 | 0d | EARG; OJG | 6h |

| ID | WBS | Task | Duration | Start | Finish | Predecessors | Total slack | Resources | Work |
| --- | --- | --- | --- | --- | --- | --- | --- | --- | --- |
| 102 | 1.19 | **Etapa 19: Junta con el cliente** | 0.5d | 2015-12-09 16:00 | 2015-12-09 17:00 |  | 0d |  | 5h |
| 103 | 1.19.1 | Junta con el cliente(aprobación del sistema) | 1h | 2015-12-09 16:00 | 2015-12-09 17:00 | 99 | 0d | OJG; EARG; YLS; AMG; SVM | 5h |
| 104 | 1.20 | **Etapa 20: Manual** | 8.5d | 2015-12-09 17:00 | 2015-12-21 18:00 |  | 0d |  | 55h |
| 105 | 1.20.1 | Especificación del módulo de vales. | 3h | 2015-12-09 17:00 | 2015-12-10 18:00 | 102 | 5d | SVM | 3h |
| 106 | 1.20.2 | Especificación del módulo de usuarios. | 3h | 2015-12-09 17:00 | 2015-12-10 18:00 | 102 | 5d | AMG | 3h |
| 107 | 1.20.3 | Especificación del módulo de proveedores. | 8h | 2015-12-09 17:00 | 2015-12-15 17:00 | 102 | 2.5d | EARG | 8h |
| 108 | 1.20.4 | Especificación del módulo de reportes. | 8h | 2015-12-09 17:00 | 2015-12-15 17:00 | 102 | 2.5d | YLS | 8h |
| 109 | 1.20.5 | Especificación del módulo de clasificación. | 13h | 2015-12-09 17:00 | 2015-12-17 18:00 | 102 | 0d | OJG | 13h |
| 110 | 1.20.6 | Revisión del manual de usuario según el plan de calidad. | 4h | 2015-12-18 16:00 | 2015-12-21 18:00 | 105, 106, 107, 108, 109 | 0d | YLS; EARG; OJG; AMG; SVM | 20h |
| 111 | 1.21 | **Etapa 21: Entrega** | 0.5d | 2015-12-22 16:00 | 2015-12-22 17:00 |  | 0d |  | 5h |
| 112 | 1.21.1 | Junta con el cliente(entrega del sistema) | 1h | 2015-12-22 16:00 | 2015-12-22 17:00 | 104 | 0d | OJG; EARG; YLS; AMG; SVM | 5h |
| 113 | 1.22 | **Tareas Administrativas** | 25.5d | 2015-12-22 17:00 | 2016-01-26 18:00 |  | 0d |  | 247h |
| 114 | 1.22.1 | Junta de estatus 1 | 1h | 2015-12-22 17:00 | 2015-12-22 18:00 | 111 | 0d | EARG; OJG; AMG; SVM; YLS | 5h |
| 115 | 1.22.2 | Junta de estatus 2 | 1h | 2015-12-23 16:00 | 2015-12-23 17:00 | 114 | 0d | EARG; OJG; AMG; SVM; YLS | 5h |
| 116 | 1.22.3 | Junta de estatus 3 | 1h | 2015-12-23 17:00 | 2015-12-23 18:00 | 115 | 0d | EARG; OJG; AMG; SVM; YLS | 5h |
| 117 | 1.22.4 | Junta de estatus 4 | 1h | 2015-12-24 16:00 | 2015-12-24 17:00 | 116 | 0d | EARG; OJG; AMG; SVM; YLS | 5h |
| 118 | 1.22.5 | Junta de estatus 5 | 1h | 2015-12-24 17:00 | 2015-12-24 18:00 | 117 | 0d | EARG; OJG; AMG; SVM; YLS | 5h |
| 119 | 1.22.6 | Junta de estatus 6 | 1h | 2015-12-25 16:00 | 2015-12-25 17:00 | 118 | 0d | EARG; OJG; AMG; SVM; YLS | 5h |
| 120 | 1.22.7 | Junta de estatus 7 | 1h | 2015-12-25 17:00 | 2015-12-25 18:00 | 119 | 0d | EARG; OJG; AMG; SVM; YLS | 5h |
| 121 | 1.22.8 | Junta de estatus 8 | 1h | 2015-12-28 16:00 | 2015-12-28 17:00 | 120 | 0d | EARG; OJG; AMG; SVM; YLS | 5h |
| 122 | 1.22.9 | Junta de estatus 9 | 1h | 2015-12-28 17:00 | 2015-12-28 18:00 | 121 | 0d | EARG; OJG; AMG; SVM; YLS | 5h |
| 123 | 1.22.10 | Junta de estatus 10 | 1h | 2015-12-29 16:00 | 2015-12-29 17:00 | 122 | 0d | EARG; OJG; AMG; SVM; YLS | 5h |
| 124 | 1.22.11 | Junta de estatus 11 | 1h | 2015-12-29 17:00 | 2015-12-29 18:00 | 123 | 0d | EARG; OJG; AMG; SVM; YLS | 5h |
| 125 | 1.22.12 | Junta de estatus 12 | 1h | 2015-12-30 16:00 | 2015-12-30 17:00 | 124 | 0d | EARG; OJG; AMG; SVM; YLS | 5h |
| 126 | 1.22.13 | Junta de estatus 13 | 1h | 2015-12-30 17:00 | 2015-12-30 18:00 | 125 | 0d | EARG; OJG; AMG; SVM; YLS | 5h |
| 127 | 1.22.14 | Junta de estatus 14 | 1h | 2015-12-31 16:00 | 2015-12-31 17:00 | 126 | 0d | EARG; OJG; AMG; SVM; YLS | 5h |
| 128 | 1.22.15 | Junta de estatus 15 | 1h | 2015-12-31 17:00 | 2015-12-31 18:00 | 127 | 0d | EARG; OJG; AMG; SVM; YLS | 5h |
| 129 | 1.22.16 | Junta de estatus 16 | 1h | 2016-01-01 16:00 | 2016-01-01 17:00 | 128 | 0d | EARG; OJG; AMG; SVM; YLS | 5h |
| 130 | 1.22.17 | Junta de estatus 17 | 1h | 2016-01-01 17:00 | 2016-01-01 18:00 | 129 | 0d | EARG; OJG; AMG; SVM; YLS | 5h |
| 131 | 1.22.18 | Junta de estatus 18 | 1h | 2016-01-04 16:00 | 2016-01-04 17:00 | 130 | 0d | EARG; OJG; AMG; SVM; YLS | 5h |
| 132 | 1.22.19 | Junta de estatus 19 | 1h | 2016-01-04 17:00 | 2016-01-04 18:00 | 131 | 0d | EARG; OJG; AMG; SVM; YLS | 5h |
| 133 | 1.22.20 | Junta de estatus 20 | 1h | 2016-01-05 16:00 | 2016-01-05 17:00 | 132 | 0d | EARG; OJG; AMG; SVM; YLS | 5h |
| 134 | 1.22.21 | Junta de estatus 21 | 1h | 2016-01-05 17:00 | 2016-01-05 18:00 | 133 | 0d | EARG; OJG; AMG; SVM; YLS | 5h |
| 135 | 1.22.22 | Junta de estatus 22 | 1h | 2016-01-06 16:00 | 2016-01-06 17:00 | 134 | 0d | EARG; OJG; AMG; SVM; YLS | 5h |
| 136 | 1.22.23 | Junta de estatus 23 | 1h | 2016-01-06 17:00 | 2016-01-06 18:00 | 135 | 0d | EARG; OJG; AMG; SVM; YLS | 5h |
| 137 | 1.22.24 | Junta de estatus 24 | 1h | 2016-01-07 16:00 | 2016-01-07 17:00 | 136 | 0d | EARG; OJG; AMG; SVM; YLS | 5h |
| 138 | 1.22.25 | Junta de estatus 25 | 1h | 2016-01-07 17:00 | 2016-01-07 18:00 | 137 | 0d | EARG; OJG; AMG; SVM; YLS | 5h |
| 139 | 1.22.26 | Junta de estatus 26 | 1h | 2016-01-08 16:00 | 2016-01-08 17:00 | 138 | 0d | EARG; OJG; AMG; SVM; YLS | 5h |
| 140 | 1.22.27 | Junta de estatus 27 | 1h | 2016-01-08 17:00 | 2016-01-08 18:00 | 139 | 0d | EARG; OJG; AMG; SVM; YLS | 5h |
| 141 | 1.22.28 | Junta de estatus 28 | 1h | 2016-01-11 16:00 | 2016-01-11 17:00 | 140 | 0d | EARG; OJG; AMG; SVM; YLS | 5h |
| 142 | 1.22.29 | Junta de estatus 29 | 1h | 2016-01-11 17:00 | 2016-01-11 18:00 | 141 | 0d | EARG; OJG; AMG; SVM; YLS | 5h |
| 143 | 1.22.30 | Junta de estatus 30 | 1h | 2016-01-12 16:00 | 2016-01-12 17:00 | 142 | 0d | EARG; OJG; AMG; SVM; YLS | 5h |
| 144 | 1.22.31 | Junta de estatus 31 | 1h | 2016-01-12 17:00 | 2016-01-12 18:00 | 143 | 0d | EARG; OJG; AMG; SVM; YLS | 5h |
| 145 | 1.22.32 | Junta de estatus 32 | 1h | 2016-01-13 16:00 | 2016-01-13 17:00 | 144 | 0d | EARG; OJG; AMG; SVM; YLS | 5h |
| 146 | 1.22.33 | Junta de estatus 33 | 1h | 2016-01-13 17:00 | 2016-01-13 18:00 | 145 | 0d | EARG; OJG; AMG; SVM; YLS | 5h |
| 147 | 1.22.34 | Junta de estatus 34 | 1h | 2016-01-14 16:00 | 2016-01-14 17:00 | 146 | 0d | EARG; OJG; AMG; SVM; YLS | 5h |
| 148 | 1.22.35 | Junta de estatus 35 | 1h | 2016-01-14 17:00 | 2016-01-14 18:00 | 147 | 0d | EARG; OJG; AMG; SVM; YLS | 5h |
| 149 | 1.22.36 | Junta de estatus 36 | 1h | 2016-01-15 16:00 | 2016-01-15 17:00 | 148 | 0d | EARG; OJG; AMG; SVM; YLS | 5h |
| 150 | 1.22.37 | Junta de estatus 37 | 1h | 2016-01-15 17:00 | 2016-01-15 18:00 | 149 | 0d | EARG; OJG; AMG; SVM; YLS | 5h |
| 151 | 1.22.38 | Junta de estatus 38 | 1h | 2016-01-18 16:00 | 2016-01-18 17:00 | 150 | 0d | EARG; OJG; AMG; SVM; YLS | 5h |
| 152 | 1.22.39 | Junta de estatus 39 | 1h | 2016-01-18 17:00 | 2016-01-18 18:00 | 151 | 0d | EARG; OJG; AMG; SVM; YLS | 5h |
| 153 | 1.22.40 | Junta de estatus 40 | 1h | 2016-01-19 16:00 | 2016-01-19 17:00 | 152 | 0d | EARG; OJG; AMG; SVM; YLS | 5h |
| 154 | 1.22.41 | Junta de estatus 41 | 1h | 2016-01-19 17:00 | 2016-01-19 18:00 | 153 | 0d | EARG; OJG; AMG; SVM; YLS | 5h |
| 155 | 1.22.42 | Junta de estatus 42 | 1h | 2016-01-20 16:00 | 2016-01-20 17:00 | 154 | 0d | EARG; OJG; AMG; SVM; YLS | 5h |
| 156 | 1.22.43 | Junta de estatus 43 | 1h | 2016-01-20 17:00 | 2016-01-20 18:00 | 155 | 0d | EARG; OJG; AMG; SVM; YLS | 5h |
| 157 | 1.22.44 | Junta de milestone 1 | 1h | 2016-01-21 16:00 | 2016-01-21 17:00 | 156 | 0d | EARG; OJG; AMG; SVM; YLS | 5h |
| 158 | 1.22.45 | Junta de milestone 2 | 1h | 2016-01-21 17:00 | 2016-01-21 18:00 | 157 | 0d | EARG; OJG; AMG; SVM; YLS | 5h |
| 159 | 1.22.46 | Junta de milestone 3 | 1h | 2016-01-22 16:00 | 2016-01-22 17:00 | 158 | 0d | EARG; OJG; AMG; SVM; YLS | 5h |
| 160 | 1.22.47 | Junta de milestone 4 | 1h | 2016-01-22 17:00 | 2016-01-22 18:00 | 159 | 0d | EARG; OJG; AMG; SVM; YLS | 5h |
| 161 | 1.22.48 | Junta de milestone 5 | 1h | 2016-01-25 16:00 | 2016-01-25 17:00 | 160 | 0d | EARG; OJG; AMG; SVM; YLS | 5h |
| 162 | 1.22.49 | Junta de milestone 6 | 1h | 2016-01-25 17:00 | 2016-01-25 18:00 | 161 | 0d | EARG; OJG; AMG; SVM; YLS | 5h |
| 163 | 1.22.50 | Auditorías de calidad | 1h | 2016-01-26 16:00 | 2016-01-26 17:00 | 162 | 0d | YLS | 1h |
| 164 | 1.22.51 | Plan de configuración | 1h | 2016-01-26 17:00 | 2016-01-26 18:00 | 163 | 0d | SVM | 1h |
